Schedule from MS Project, 2019-04-29 to 2019-06-11, 5 hours a day, costs in €.

## Calendars

- Standard: Mon-Fri 08:00-12:00, 13:00-17:00; Sat-Sun off.

## Resources

| Resource | Rate |
| --- | --- |
| Daniel | 5 |
| Diogo | 5 |

## Schedule

| ID | WBS | Task | Duration | Start | Finish | Predecessors | Total slack | Free slack | Constraint | Resources | Work | Cost | Story Points |
| --- | --- | --- | --- | --- | --- | --- | --- | --- | --- | --- | --- | --- | --- |
| 1 | 1 | **Projeto MDS** | 49.61d | 2019-04-29 08:00 | 2019-06-11 08:02 |  | 0d |  |  |  | 259.97h | 1,299.83 |  |
| 2 | 1.1 | **Inicio Projeto** | 0.1d | 2019-04-29 08:00 | 2019-04-29 08:30 |  | 43.67d | 0d |  |  | 1h | 5 |  |
| 3 | 1.1.1 | Reunião Inicial | 30min | 2019-04-29 08:00 | 2019-04-29 08:30 |  | 43.67d |  |  | Daniel; Diogo | 1h | 5 | 20 |
| 4 | 1.2 | **Planeamento Projeto** | 5.83d | 2019-04-29 08:30 | 2019-05-02 14:40 |  | 43.67d |  |  |  | 52.33h | 261.67 |  |
| 5 | 1.2.1 | **Build Backlog** | 1.3d | 2019-04-29 08:30 | 2019-04-29 16:00 | 2 | 43.67d | 0d |  |  | 7h | 35 |  |
| 6 | 1.2.1.1 | Determinar Requerimentos do Cliente | 30min | 2019-04-29 08:30 | 2019-04-29 09:00 | 2 | 43.67d | 0d |  | Daniel; Diogo | 1h | 5 | 20 |
| 7 | 1.2.1.2 | Criar User Stories | 4h | 2019-04-29 09:00 | 2019-04-29 14:00 | 6 | 43.67d | 0d |  | Daniel | 4h | 20 | 30 |
| 8 | 1.2.1.3 | Priorizar convenientemente User Stories | 2h | 2019-04-29 14:00 | 2019-04-29 16:00 | 7 | 43.67d |  |  | Diogo | 2h | 10 | 20 |
| 9 | 1.2.2 | Definir o numero de Sprints | 10min | 2019-04-29 16:00 | 2019-04-29 16:10 | 5 | 43.67d | 0d |  | Daniel; Diogo | 0.33h | 1.67 | 10 |
| 10 | 1.2.3 | Definir Plano de Comunicação | 15min | 2019-04-29 16:10 | 2019-04-29 16:25 | 9 | 43.67d | 0d |  | Daniel; Diogo | 0.5h | 2.5 | 10 |
| 11 | 1.2.4 | Definir Metodologias de trabalho | 30min | 2019-04-29 16:25 | 2019-04-29 16:55 | 10 | 43.67d | 0d |  | Daniel; Diogo | 1h | 5 | 10 |
| 12 | 1.2.5 | Identificação dos Riscos do Projeto | 45min | 2019-04-29 16:55 | 2019-04-30 08:40 | 11 | 43.67d | 0d |  | Daniel; Diogo | 1.5h | 7.5 | 30 |
| 13 | 1.2.6 | Analise dos Riscos do Projeto | 30min | 2019-04-30 08:40 | 2019-04-30 09:10 | 12 | 43.67d | 0d |  | Daniel; Diogo | 1h | 5 | 20 |
| 14 | 1.2.7 | Possiveis soluções para os Riscos do Projeto | 30min | 2019-04-30 09:10 | 2019-04-30 09:40 | 13 | 43.67d | 0d |  | Daniel; Diogo | 1h | 5 | 30 |
| 15 | 1.2.8 | Relatorio de Planeamento | 4d | 2019-04-30 09:40 | 2019-05-02 14:40 | 5, 9, 10, 11, 12, 13, 14 | 43.67d |  |  | Daniel | 20h | 100 | 40 |
| 16 | 1.2.9 | Relatorio de Especificacao de Requisitos | 4d | 2019-04-30 09:40 | 2019-05-02 14:40 | 5, 9, 10, 11, 12, 13, 14 | 43.67d |  |  | Diogo | 20h | 100 | 40 |
| 17 | 1.3 | **Build Phase** | 41.4d | 2019-05-06 09:00 | 2019-06-10 17:00 |  |  |  |  |  | 196.57h | 982.83 |  |
| 18 | 1.3.1 | Weekly Scrum 1 | 30min | 2019-05-06 09:00 | 2019-05-06 09:30 |  | 18.79d | 0d | start no earlier than 2019-05-06 09:00 | Daniel; Diogo | 1h | 5 | 10 |
| 19 | 1.3.2 | Weekly Scrum 2 | 30min | 2019-05-13 11:00 | 2019-05-13 11:30 | 18 | 32.51d | 7.3d | start no earlier than 2019-05-13 11:00 | Daniel; Diogo | 1h | 5 | 10 |
| 20 | 1.3.3 | Weekly Scrum 3 | 30min | 2019-05-20 08:00 | 2019-05-20 08:30 | 19 | 25.21d | 7.9d | start no earlier than 2019-05-20 08:00 | Daniel; Diogo | 1h | 5 | 10 |
| 21 | 1.3.4 | Weekly Scrum 4 | 30min | 2019-05-27 08:00 | 2019-05-27 08:30 | 20 | 17.31d | 7.9d | start no earlier than 2019-05-27 08:00 | Daniel; Diogo | 1h | 5 | 10 |
| 22 | 1.3.5 | Weekly Scrum 5 | 30min | 2019-06-03 08:00 | 2019-06-03 08:30 | 21 | 9.41d | 7.9d | start no earlier than 2019-06-03 08:00 | Daniel; Diogo | 1h | 5 | 10 |
| 23 | 1.3.6 | Weekly Scrum 6 | 30min | 2019-06-10 08:00 | 2019-06-10 08:30 | 22 | 1.51d |  | start no earlier than 2019-06-10 08:00 | Daniel; Diogo | 1h | 5 | 10 |
| 24 | 1.3.7 | **Sprint 1 - Dia 05/05 até 27/05** | 12.91d | 2019-05-06 09:30 | 2019-05-16 10:02 |  | 18.59d | 10.99d |  |  | 99h | 495 |  |
| 25 | 1.3.7.1 | Planeamento da Sprint | 2h | 2019-05-06 09:30 | 2019-05-06 11:30 | 18 | 18.79d | 0d |  | Diogo; Daniel | 4h | 20 | 15 |

| ID | WBS | Task | Duration | Start | Finish | Predecessors | Total slack | Free slack | Constraint | Resources | Work | Cost | Story Points |
| --- | --- | --- | --- | --- | --- | --- | --- | --- | --- | --- | --- | --- | --- |
| 26 | 1.3.7.2 | **User Story 1 - Entity Framework** | 2d | 2019-05-06 11:30 | 2019-05-07 14:30 |  | 18.79d | 0d |  |  | 10h | 50 |  |
| 27 | 1.3.7.2.1 | Criação das Classes com a Entity Framework | 1.5d | 2019-05-06 11:30 | 2019-05-07 11:00 | 25 | 18.79d | 0d |  | Daniel | 7.5h | 37.5 | 60 |
| 28 | 1.3.7.2.2 | Ligação das Classes entre Si | 0.5d | 2019-05-07 11:00 | 2019-05-07 14:30 | 27 | 18.79d |  |  | Daniel | 2.5h | 12.5 | 50 |
| 29 | 1.3.7.3 | **User Story 2 - Form Menu_Inicial** | 1.8d | 2019-05-07 14:30 | 2019-05-08 15:30 |  | 18.79d | 0d |  |  | 9h | 45 |  |
| 30 | 1.3.7.3.1 | Criação do Form | 30min | 2019-05-07 14:30 | 2019-05-07 15:00 | 26 | 18.79d | 0d |  | Diogo | 0.5h | 2.5 | 15 |
| 31 | 1.3.7.3.2 | Criação do UI | 1h | 2019-05-07 15:00 | 2019-05-07 16:00 | 30 | 18.79d | 0d |  | Diogo | 1h | 5 | 15 |
| 32 | 1.3.7.3.3 | Implementar Codigo Necessário Para Transição de Forms | 1d | 2019-05-07 16:00 | 2019-05-08 12:00 | 31 | 18.79d | 0d |  | Diogo | 5h | 25 | 30 |
| 33 | 1.3.7.3.4 | Testar Funcionalidades | 2h | 2019-05-08 13:00 | 2019-05-08 15:00 | 32 | 18.79d | 0d |  | Diogo | 2h | 10 | 20 |
| 34 | 1.3.7.3.5 | Refatoração do Código | 30min | 2019-05-08 15:00 | 2019-05-08 15:30 | 33 | 18.79d |  |  | Diogo | 0.5h | 2.5 | 10 |
| 35 | 1.3.7.4 | **User Story 3 -> 8 - Form Gestao_Clientes** | 6.2d | 2019-05-08 15:30 | 2019-05-14 14:30 |  | 18.79d | 2.5d |  |  | 30.5h | 152.5 |  |
| 36 | 1.3.7.4.1 | **User Story 3 - Design do Form Gestao_Clientes** | 0.4d | 2019-05-08 15:30 | 2019-05-09 08:30 |  | 18.79d | 0d |  |  | 2h | 10 |  |
| 37 | 1.3.7.4.1.1 | Criação do Form | 30min | 2019-05-08 15:30 | 2019-05-08 16:00 | 29 | 18.79d | 0d |  | Diogo | 0.5h | 2.5 | 15 |
| 38 | 1.3.7.4.1.2 | Implementação do UI | 1h | 2019-05-08 16:00 | 2019-05-08 17:00 | 37 | 21.19d | 0d |  | Daniel | 1h | 5 | 15 |
| 39 | 1.3.7.4.1.3 | Implementar Butões Necessários | 30min | 2019-05-09 08:00 | 2019-05-09 08:30 | 38 | 21.19d |  |  | Daniel | 0.5h | 2.5 | 20 |
| 40 | 1.3.7.4.2 | **User Story 4 - Adicionar Cliente** | 1d | 2019-05-09 08:30 | 2019-05-09 14:30 |  | 21.19d | 0.9d |  |  | 5h | 25 |  |
| 41 | 1.3.7.4.2.1 | Implementação do código | 1d | 2019-05-09 08:30 | 2019-05-09 14:30 | 36 | 21.19d | 0d |  | Daniel | 5h | 25 | 30 |
| 42 | 1.3.7.4.3 | **User Story 5 - Editar Cliente** | 0.5d | 2019-05-09 14:30 | 2019-05-09 17:00 |  | 21.19d | 0.4d |  |  | 2.5h | 12.5 |  |
| 43 | 1.3.7.4.3.1 | Implementação do código | 0.5d | 2019-05-09 14:30 | 2019-05-09 17:00 | 41 | 21.19d | 0d |  | Daniel | 2.5h | 12.5 | 30 |
| 44 | 1.3.7.4.4 | **User Story 6 - Eliminar Cliente** | 0.4d | 2019-05-10 08:00 | 2019-05-10 10:00 |  | 21.19d | 0d |  |  | 2h | 10 |  |
| 45 | 1.3.7.4.4.1 | Verificação se o user pretende apagar os dados selecionados | 30min | 2019-05-10 08:00 | 2019-05-10 08:30 | 43 | 21.19d | 0d |  | Daniel | 0.5h | 2.5 | 20 |
| 46 | 1.3.7.4.4.2 | Implementação do código | 1.5h | 2019-05-10 08:30 | 2019-05-10 10:00 | 45 | 21.19d |  |  | Daniel | 1.5h | 7.5 | 30 |
| 47 | 1.3.7.4.5 | **User Story 7 - Guardar Dados Cliente** | 1d | 2019-05-10 10:00 | 2019-05-10 16:00 |  | 21.19d | 0d |  |  | 5h | 25 |  |
| 48 | 1.3.7.4.5.1 | Implementar ficheiro binário para guardar dados | 5h | 2019-05-10 10:00 | 2019-05-10 16:00 | 36, 40, 42, 44 | 21.19d |  |  | Daniel | 5h | 25 | 35 |
| 49 | 1.3.7.4.6 | **User Story 8 - Proteções e Correções de Erros** | 2.9d | 2019-05-10 16:00 | 2019-05-14 14:30 |  | 21.09d |  |  |  | 14h | 70 |  |
| 50 | 1.3.7.4.6.1 | Implementar proteções necessárias | 4h | 2019-05-10 16:00 | 2019-05-13 11:00 | 47 | 21.19d | 0.1d |  | Daniel | 4h | 20 | 30 |
| 51 | 1.3.7.4.6.2 | Garantir que os dados criados no Form são guardados | 1h | 2019-05-13 11:30 | 2019-05-13 13:30 | 50 | 21.09d | 0d | start no earlier than 2019-05-13 11:30 | Daniel | 1h | 5 | 15 |
| 52 | 1.3.7.4.6.3 | Testar Funcionalidades | 4h | 2019-05-13 13:30 | 2019-05-14 08:30 | 51 | 21.09d | 0d |  | Daniel | 4h | 20 | 20 |
| 53 | 1.3.7.4.6.4 | Correção de Bugs/Erros | 3h | 2019-05-14 08:30 | 2019-05-14 11:30 | 52 | 21.09d | 0d |  | Daniel | 3h | 15 | 30 |
| 54 | 1.3.7.4.6.5 | Refatoração do Código | 2h | 2019-05-14 11:30 | 2019-05-14 14:30 | 53 | 21.09d |  |  | Daniel | 2h | 10 | 10 |

| ID | WBS | Task | Duration | Start | Finish | Predecessors | Total slack | Free slack | Constraint | Resources | Work | Cost | Story Points |
| --- | --- | --- | --- | --- | --- | --- | --- | --- | --- | --- | --- | --- | --- |
| 55 | 1.3.7.5 | **User Story 9-20 - Form Gestão_Vendas** | 7.9d | 2019-05-08 16:00 | 2019-05-15 15:30 |  | 18.59d | 0.7d |  |  | 38.5h | 192.5 |  |
| 56 | 1.3.7.5.1 | **User Story 9 - Design do Form Gestao_Vendas** | 0.4d | 2019-05-08 16:00 | 2019-05-09 09:00 |  | 18.79d | 0d |  |  | 2h | 10 |  |
| 57 | 1.3.7.5.1.1 | Criação do Form | 30min | 2019-05-08 16:00 | 2019-05-08 16:30 | 37, 29 | 18.79d | 0d |  | Diogo | 0.5h | 2.5 | 15 |
| 58 | 1.3.7.5.1.2 | Implementação do UI | 1h | 2019-05-08 16:30 | 2019-05-09 08:30 | 57 | 18.79d | 0d |  | Diogo | 1h | 5 | 15 |
| 59 | 1.3.7.5.1.3 | Implementar Butões Necessários | 30min | 2019-05-09 08:30 | 2019-05-09 09:00 | 58 | 18.79d |  |  | Diogo | 0.5h | 2.5 | 20 |
| 60 | 1.3.7.5.2 | **User Story 10 - Adicionar Carro Vendido** | 1d | 2019-05-09 09:00 | 2019-05-09 15:00 |  | 18.79d | 0d |  |  | 5h | 25 |  |
| 61 | 1.3.7.5.2.1 | Implementação do código | 5h | 2019-05-09 09:00 | 2019-05-09 15:00 | 56 | 18.79d |  |  | Diogo | 5h | 25 | 30 |
| 62 | 1.3.7.5.3 | **User Story 11 - Editar Carro Vendido** | 0.8d | 2019-05-09 15:00 | 2019-05-10 10:00 |  | 18.79d | 0d |  |  | 4h | 20 |  |
| 63 | 1.3.7.5.3.1 | Implementação do código | 4h | 2019-05-09 15:00 | 2019-05-10 10:00 | 60 | 18.79d |  |  | Diogo | 4h | 20 | 30 |
| 64 | 1.3.7.5.4 | **User Story 12 - Eliminar Carro Vendido** | 0.5d | 2019-05-10 10:00 | 2019-05-10 13:30 |  | 18.79d | 0d |  |  | 2.5h | 12.5 |  |
| 65 | 1.3.7.5.4.1 | Verificação se o user pretende apagar os dados selecionados | 30min | 2019-05-10 10:00 | 2019-05-10 10:30 | 62 | 18.79d | 0d |  | Diogo | 0.5h | 2.5 | 20 |
| 66 | 1.3.7.5.4.2 | Implementação do código | 2h | 2019-05-10 10:30 | 2019-05-10 13:30 | 65 | 18.79d |  |  | Diogo | 2h | 10 | 30 |
| 67 | 1.3.7.5.5 | **User Story 13 - Listar Carros Vendidos** | 0.2d | 2019-05-10 13:30 | 2019-05-10 14:30 |  | 18.79d | 0d |  |  | 1h | 5 |  |
| 68 | 1.3.7.5.5.1 | Implementação do código | 1h | 2019-05-10 13:30 | 2019-05-10 14:30 | 56, 60, 62, 64 | 18.79d |  |  | Diogo | 1h | 5 | 30 |
| 69 | 1.3.7.5.6 | **User Story 14 - Listar Gastos e Total Gastos** | 0.2d | 2019-05-10 14:30 | 2019-05-10 15:30 |  | 18.79d | 0d |  |  | 1h | 5 |  |
| 70 | 1.3.7.5.6.1 | Implementação do código | 1h | 2019-05-10 14:30 | 2019-05-10 15:30 | 56, 60, 62, 64, 67 | 18.79d |  |  | Diogo | 1h | 5 | 30 |
| 71 | 1.3.7.5.7 | **User Story 15 - Listar Ganhos e Total Ganhos** | 0.2d | 2019-05-10 15:30 | 2019-05-10 16:30 |  | 18.79d | 0d |  |  | 1h | 5 |  |
| 72 | 1.3.7.5.7.1 | Implementação do código | 1h | 2019-05-10 15:30 | 2019-05-10 16:30 | 56, 60, 62, 64, 69 | 18.79d |  |  | Diogo | 1h | 5 | 30 |
| 73 | 1.3.7.5.8 | **User Story 16 - Listar Margem Lucro e Total Lucro** | 0.2d | 2019-05-10 16:30 | 2019-05-13 08:30 |  | 18.79d | 0d |  |  | 1h | 5 |  |
| 74 | 1.3.7.5.8.1 | Implementação do código | 1h | 2019-05-10 16:30 | 2019-05-13 08:30 | 56, 60, 62, 64, 71 | 18.79d |  |  | Diogo | 1h | 5 | 30 |
| 75 | 1.3.7.5.9 | **User Story 17 - Calcular Valor IVA** | 0.4d | 2019-05-13 08:30 | 2019-05-13 10:30 |  | 18.79d | 0.2d |  |  | 2h | 10 |  |
| 76 | 1.3.7.5.9.1 | Criação de metodo para realizar o calculo | 1.5h | 2019-05-13 08:30 | 2019-05-13 10:00 | 56, 60, 62, 64, 73 | 18.79d | 0d | start no earlier than 2019-05-13 08:30 | Diogo | 1.5h | 7.5 | 15 |
| 77 | 1.3.7.5.9.2 | Implementação do código | 30min | 2019-05-13 10:00 | 2019-05-13 10:30 | 76 | 18.79d |  |  | Diogo | 0.5h | 2.5 | 30 |
| 78 | 1.3.7.5.10 | **User Story 18 - Calcular Valor Desconto** | 0.4d | 2019-05-13 11:30 | 2019-05-13 14:30 |  | 18.59d | 0d |  |  | 2h | 10 |  |
| 79 | 1.3.7.5.10.1 | Criação de metodo para realizar o calculo | 1.5h | 2019-05-13 11:30 | 2019-05-13 14:00 | 56, 60, 62, 64, 75 | 18.59d | 0d | start no earlier than 2019-05-13 11:30 | Diogo | 1.5h | 7.5 | 15 |
| 80 | 1.3.7.5.10.2 | Implementação do código | 30min | 2019-05-13 14:00 | 2019-05-13 14:30 | 79 | 18.59d |  |  | Diogo | 0.5h | 2.5 | 30 |

| ID | WBS | Task | Duration | Start | Finish | Predecessors | Total slack | Free slack | Resources | Work | Cost | Story Points |
| --- | --- | --- | --- | --- | --- | --- | --- | --- | --- | --- | --- | --- |
| 81 | 1.3.7.5.11 | **User Story 19 - Calcular Valor Total Extras** | 0.4d | 2019-05-13 14:30 | 2019-05-13 16:30 |  | 18.59d | 0d |  | 2h | 10 |  |
| 82 | 1.3.7.5.11.1 | Criação de metodo para realizar o calculo | 1.5h | 2019-05-13 14:30 | 2019-05-13 16:00 | 56, 60, 62, 64, 67, 78 | 18.59d | 0d | Diogo | 1.5h | 7.5 | 15 |
| 83 | 1.3.7.5.11.2 | Implementação do código | 30min | 2019-05-13 16:00 | 2019-05-13 16:30 | 82 | 18.59d |  | Diogo | 0.5h | 2.5 | 30 |
| 84 | 1.3.7.5.12 | **User Story 20 - Proteções e Correções de Erros** | 3d | 2019-05-13 16:30 | 2019-05-15 15:30 |  | 18.59d | 0d |  | 15h | 75 |  |
| 85 | 1.3.7.5.12.1 | Garantir que os dados criados no Form são guardados | 1h | 2019-05-13 16:30 | 2019-05-14 08:30 | 56, 60, 62, 64, 67, 69, 71, 73, 75, 78, 81 | 18.59d | 0d | Diogo | 1h | 5 | 20 |
| 86 | 1.3.7.5.12.2 | Garantir que os dados anteriores são carregados | 1h | 2019-05-14 08:30 | 2019-05-14 09:30 | 85 | 18.59d | 0d | Diogo | 1h | 5 | 15 |
| 87 | 1.3.7.5.12.3 | Implementar proteções necessárias | 4h | 2019-05-14 09:30 | 2019-05-14 14:30 | 86 | 18.59d | 0d | Diogo | 4h | 20 | 30 |
| 88 | 1.3.7.5.12.4 | Testar Funcionalidades | 4h | 2019-05-14 14:30 | 2019-05-15 09:30 | 87 | 18.59d | 0d | Diogo | 4h | 20 | 20 |
| 89 | 1.3.7.5.12.5 | Correção de Bugs/Erros | 3h | 2019-05-15 09:30 | 2019-05-15 13:30 | 88 | 18.59d | 0d | Diogo | 3h | 15 | 20 |
| 90 | 1.3.7.5.12.6 | Refatoração do Código | 2h | 2019-05-15 13:30 | 2019-05-15 15:30 | 89 | 18.59d |  | Diogo | 2h | 10 | 30 |
| 91 | 1.3.7.6 | Revisão do Sprint | 2h | 2019-05-15 15:30 | 2019-05-16 08:30 | 84 | 18.59d | 0d | Daniel; Diogo | 4h | 20 | 25 |
| 92 | 1.3.7.7 | Retrospetiva do Sprint | 1h | 2019-05-16 08:30 | 2019-05-16 09:30 | 91 | 18.59d | 0d | Daniel; Diogo | 2h | 10 | 25 |
| 93 | 1.3.7.8 | Reunião Final Do Sprint | 30min | 2019-05-16 09:30 | 2019-05-16 10:00 | 92 | 18.59d | 0d | Daniel; Diogo | 1h | 5 | 25 |
| 94 | 1.3.7.9 | SPRINT 1 COMPLETO | 2min | 2019-05-16 10:00 | 2019-05-16 10:02 | 25, 26, 29, 35, 55, 91, 92, 93 | 18.59d |  |  |  |  |  |
| 95 | 1.3.8 | **Sprint 2 - Dia 27/05 até 19/06** | 11.41d | 2019-05-27 09:00 | 2019-06-05 10:02 |  |  |  |  | 84.5h | 422.5 |  |
| 96 | 1.3.8.1 | Planeamento da Sprint | 2h | 2019-05-27 09:00 | 2019-05-27 11:00 | 24 | 7.6d | 0d | Daniel; Diogo | 4h | 20 | 15 |
| 97 | 1.3.8.2 | **User Story 21 - 32 - Form Gestão_Oficina** | 8.9d | 2019-05-27 11:00 | 2019-06-03 16:30 |  | 7.6d |  |  | 44.5h | 222.5 |  |
| 98 | 1.3.8.2.1 | **User Story 21 - Design do Form Gestao_Vendas** | 0.4d | 2019-05-27 11:00 | 2019-05-27 14:00 |  | 7.6d | 0d |  | 2h | 10 |  |
| 99 | 1.3.8.2.1.1 | Criação do Form | 30min | 2019-05-27 11:00 | 2019-05-27 11:30 | 30, 37, 57, 96 | 7.6d | 0d | Diogo | 0.5h | 2.5 | 15 |
| 100 | 1.3.8.2.1.2 | Implentação do UI | 1h | 2019-05-27 11:30 | 2019-05-27 13:30 | 99 | 7.6d | 0d | Daniel | 1h | 5 | 15 |
| 101 | 1.3.8.2.1.3 | Implementar butões Necessários | 30min | 2019-05-27 13:30 | 2019-05-27 14:00 | 100 | 7.6d |  | Daniel | 0.5h | 2.5 | 20 |
| 102 | 1.3.8.2.2 | **User Story 22 - Adicionar Carro de Oficina** | 0.8d | 2019-05-27 14:00 | 2019-05-28 09:00 |  | 7.6d | 0d |  | 4h | 20 |  |
| 103 | 1.3.8.2.2.1 | Implementação do código | 4h | 2019-05-27 14:00 | 2019-05-28 09:00 | 98 | 7.6d |  | Daniel | 4h | 20 | 30 |
| 104 | 1.3.8.2.3 | **User Story 23 - Adicionar Serviços a um Carro** | 0.4d | 2019-05-28 09:00 | 2019-05-28 11:00 |  | 7.6d | 0d |  | 2h | 10 |  |
| 105 | 1.3.8.2.3.1 | Implementação do código | 2h | 2019-05-28 09:00 | 2019-05-28 11:00 | 102 | 7.6d |  | Daniel | 2h | 10 | 30 |

| ID | WBS | Task | Duration | Start | Finish | Predecessors | Total slack | Free slack | Resources | Work | Cost | Story Points |
| --- | --- | --- | --- | --- | --- | --- | --- | --- | --- | --- | --- | --- |
| 106 | 1.3.8.2.4 | **User Story 24 - Adicionar Parcela a Serviço** | 0.4d | 2019-05-28 11:00 | 2019-05-28 14:00 |  | 7.6d | 0d |  | 2h | 10 |  |
| 107 | 1.3.8.2.4.1 | Implementação do código | 2h | 2019-05-28 11:00 | 2019-05-28 14:00 | 104 | 7.6d |  | Daniel | 2h | 10 | 30 |
| 108 | 1.3.8.2.5 | **User Story 25- Apagar Carro de Oficina** | 0.5d | 2019-05-28 14:00 | 2019-05-28 16:30 |  | 7.6d | 0d |  | 2.5h | 12.5 |  |
| 109 | 1.3.8.2.5.1 | Verificação se o user pretende apagar os dados selecionados | 30min | 2019-05-28 14:00 | 2019-05-28 14:30 | 106 | 7.6d | 0d | Daniel | 0.5h | 2.5 | 20 |
| 110 | 1.3.8.2.5.2 | Implementação do código | 2h | 2019-05-28 14:30 | 2019-05-28 16:30 | 109 | 7.6d |  | Daniel | 2h | 10 | 30 |
| 111 | 1.3.8.2.6 | **User Story 26 - Eliminar Serviço do Carro** | 0.5d | 2019-05-28 16:30 | 2019-05-29 10:00 |  | 7.6d | 0d |  | 2.5h | 12.5 |  |
| 112 | 1.3.8.2.6.1 | Verificação se o user pretende apagar os dados selecionados | 30min | 2019-05-28 16:30 | 2019-05-28 17:00 | 108 | 7.6d | 0d | Daniel | 0.5h | 2.5 | 20 |
| 113 | 1.3.8.2.6.2 | Implementação do código | 2h | 2019-05-29 08:00 | 2019-05-29 10:00 | 112 | 7.6d |  | Daniel | 2h | 10 | 30 |
| 114 | 1.3.8.2.7 | **User Story 27 - Eliminar Parcela do Serviço** | 0.5d | 2019-05-29 10:00 | 2019-05-29 13:30 |  | 7.6d | 0d |  | 2.5h | 12.5 |  |
| 115 | 1.3.8.2.7.1 | Verificação se o user pretende apagar os dados selecionados | 30min | 2019-05-29 10:00 | 2019-05-29 10:30 | 111 | 7.6d | 0d | Daniel | 0.5h | 2.5 | 20 |
| 116 | 1.3.8.2.7.2 | Implementação do código | 2h | 2019-05-29 10:30 | 2019-05-29 13:30 | 115 | 7.6d |  | Daniel | 2h | 10 | 30 |
| 117 | 1.3.8.2.8 | **User Story 28 - Calcular Custo Total Carro** | 0.4d | 2019-05-29 13:30 | 2019-05-29 15:30 |  | 7.6d | 0d |  | 2h | 10 |  |
| 118 | 1.3.8.2.8.1 | Criação de metodo para realizar o calculo | 1.5h | 2019-05-29 13:30 | 2019-05-29 15:00 | 114 | 7.6d | 0d | Daniel | 1.5h | 7.5 | 25 |
| 119 | 1.3.8.2.8.2 | Implementação do código | 30min | 2019-05-29 15:00 | 2019-05-29 15:30 | 118 | 7.6d |  | Daniel | 0.5h | 2.5 | 30 |
| 120 | 1.3.8.2.9 | **User Story 29 - Calcular Custo Total Serviço** | 0.4d | 2019-05-29 15:30 | 2019-05-30 08:30 |  | 7.6d | 0d |  | 2h | 10 |  |
| 121 | 1.3.8.2.9.1 | Criação de metodo para realizar o calculo | 1.5h | 2019-05-29 15:30 | 2019-05-29 17:00 | 117 | 7.6d | 0d | Daniel | 1.5h | 7.5 | 25 |
| 122 | 1.3.8.2.9.2 | Implementação do código | 30min | 2019-05-30 08:00 | 2019-05-30 08:30 | 121 | 7.6d |  | Daniel | 0.5h | 2.5 | 30 |
| 123 | 1.3.8.2.10 | **User Story 30 - Calcular Custo Total Cliente** | 0.4d | 2019-05-30 08:30 | 2019-05-30 10:30 |  | 7.6d | 0d |  | 2h | 10 |  |
| 124 | 1.3.8.2.10.1 | Criação de metodo para realizar o calculo | 1.5h | 2019-05-30 08:30 | 2019-05-30 10:00 | 120 | 7.6d | 0d | Daniel | 1.5h | 7.5 | 25 |
| 125 | 1.3.8.2.10.2 | Implementação do código | 30min | 2019-05-30 10:00 | 2019-05-30 10:30 | 124 | 7.6d |  | Daniel | 0.5h | 2.5 | 30 |
| 126 | 1.3.8.2.11 | **User Story 31 - Emitir Fatura por Serviço** | 1.4d | 2019-05-30 10:30 | 2019-05-31 09:30 |  | 7.6d | 0d |  | 7h | 35 |  |
| 127 | 1.3.8.2.11.1 | Carregar todos os dados relativos ao serviço | 2h | 2019-05-30 10:30 | 2019-05-30 13:30 | 98, 102, 104, 106, 108, 114, 117, 120, 123 | 7.6d | 0d | Daniel | 2h | 10 | 25 |
| 128 | 1.3.8.2.11.2 | Implementar código para emitir fatura | 5h | 2019-05-30 13:30 | 2019-05-31 09:30 | 127 | 7.6d |  | Daniel | 5h | 25 | 40 |
| 129 | 1.3.8.2.12 | **User Story 32 - Proteções e Correções de Bugs** | 2.8d | 2019-05-31 09:30 | 2019-06-03 16:30 |  | 7.6d |  |  | 14h | 70 |  |
| 130 | 1.3.8.2.12.1 | Garantir que os dados anteriores são carregados | 1h | 2019-05-31 09:30 | 2019-05-31 10:30 | 126 | 7.6d | 0d | Daniel | 1h | 5 | 20 |
| 131 | 1.3.8.2.12.2 | Garantir que os dados criados no Form são guardados | 1h | 2019-05-31 10:30 | 2019-05-31 11:30 | 130 | 7.6d | 0d | Daniel | 1h | 5 | 20 |
| 132 | 1.3.8.2.12.3 | Implementar Proteções Necessárias | 4h | 2019-05-31 11:30 | 2019-05-31 16:30 | 131 | 7.6d | 0d | Daniel | 4h | 20 | 30 |
| 133 | 1.3.8.2.12.4 | Testar Funcionalidades | 3h | 2019-05-31 16:30 | 2019-06-03 10:30 | 132 | 7.6d | 0d | Daniel | 3h | 15 | 20 |
| 134 | 1.3.8.2.12.5 | Correção de Bugs/Erros | 3h | 2019-06-03 10:30 | 2019-06-03 14:30 | 133 | 7.6d | 0d | Daniel | 3h | 15 | 30 |
| 135 | 1.3.8.2.12.6 | Refatoração do Código | 2h | 2019-06-03 14:30 | 2019-06-03 16:30 | 134 | 7.6d |  | Daniel | 2h | 10 | 15 |

| ID | WBS | Task | Duration | Start | Finish | Predecessors | Total slack | Free slack | Constraint | Resources | Work | Cost | Story Points |
| --- | --- | --- | --- | --- | --- | --- | --- | --- | --- | --- | --- | --- | --- |
| 136 | 1.3.8.3 | **User Story 33 - 40 - Form Gestão_Aluguer** | 7.2d | 2019-05-27 11:30 | 2019-05-31 16:30 |  | 8.99d |  |  |  | 36h | 180 |  |
| 137 | 1.3.8.3.1 | **User Story 33 - Design form Gestao_Aluguer** | 0.4d | 2019-05-27 11:30 | 2019-05-27 14:30 |  | 8.99d | 0d |  |  | 2h | 10 |  |
| 138 | 1.3.8.3.1.1 | Criação do Form | 30min | 2019-05-27 11:30 | 2019-05-27 12:00 | 30, 37, 57, 99 | 8.99d | 0d |  | Diogo | 0.5h | 2.5 | 15 |
| 139 | 1.3.8.3.1.2 | Implentação do UI | 1h | 2019-05-27 13:00 | 2019-05-27 14:00 | 138 | 8.99d | 0d |  | Diogo | 1h | 5 | 15 |
| 140 | 1.3.8.3.1.3 | Implementar butões Necessários | 30min | 2019-05-27 14:00 | 2019-05-27 14:30 | 139 | 8.99d |  |  | Diogo | 0.5h | 2.5 | 20 |
| 141 | 1.3.8.3.2 | **User Story 34 - Adicionar Carro de Aluguer** | 0.8d | 2019-05-27 14:30 | 2019-05-28 09:30 |  | 8.99d | 0d |  |  | 4h | 20 |  |
| 142 | 1.3.8.3.2.1 | Implementação do código | 4h | 2019-05-27 14:30 | 2019-05-28 09:30 | 137 | 8.99d |  |  | Diogo | 4h | 20 | 30 |
| 143 | 1.3.8.3.3 | **User Story 35 - Eliminar Carro de Aluguer** | 0.4d | 2019-05-28 09:30 | 2019-05-28 11:30 |  | 8.99d | 0d |  |  | 2h | 10 |  |
| 144 | 1.3.8.3.3.1 | Verificação se o user pretende apagar os dados selecionados | 30min | 2019-05-28 09:30 | 2019-05-28 10:00 | 141 | 8.99d | 0d |  | Diogo | 0.5h | 2.5 | 20 |
| 145 | 1.3.8.3.3.2 | Implementação do código | 1.5h | 2019-05-28 10:00 | 2019-05-28 11:30 | 144 | 8.99d |  |  | Diogo | 1.5h | 7.5 | 30 |
| 146 | 1.3.8.3.4 | **User Story 36 - Atribuir Carro de Aluguer a Cliente** | 0.6d | 2019-05-28 11:30 | 2019-05-28 15:30 |  | 8.99d | 0d |  |  | 3h | 15 |  |
| 147 | 1.3.8.3.4.1 | Implementação do código | 3h | 2019-05-28 11:30 | 2019-05-28 15:30 | 143 | 8.99d |  |  | Diogo | 3h | 15 | 30 |
| 148 | 1.3.8.3.5 | **User Story 37 - Calcular Kilometros Percorridos** | 0.4d | 2019-05-28 15:30 | 2019-05-29 08:30 |  | 8.99d | 0d |  |  | 2h | 10 |  |
| 149 | 1.3.8.3.5.1 | Criação de metodo para realizar o calculo | 1.5h | 2019-05-28 15:30 | 2019-05-28 17:00 | 146 | 8.99d | 0d |  | Diogo | 1.5h | 7.5 | 20 |
| 150 | 1.3.8.3.5.2 | Implementação do código | 30min | 2019-05-29 08:00 | 2019-05-29 08:30 | 149 | 8.99d |  |  | Diogo | 0.5h | 2.5 | 30 |
| 151 | 1.3.8.3.6 | **User Story 38 - Calcular Valor a Pagar** | 0.4d | 2019-05-29 08:30 | 2019-05-29 10:30 |  | 8.99d | 0d |  |  | 2h | 10 |  |
| 152 | 1.3.8.3.6.1 | Criação de metodo para realizar o calculo | 1.5h | 2019-05-29 08:30 | 2019-05-29 10:00 | 148 | 8.99d | 0d |  | Diogo | 1.5h | 7.5 | 20 |
| 153 | 1.3.8.3.6.2 | Implementação do código | 30min | 2019-05-29 10:00 | 2019-05-29 10:30 | 152 | 8.99d |  |  | Diogo | 0.5h | 2.5 | 30 |
| 154 | 1.3.8.3.7 | **User Story 39 - Emitir Fatura de Aluguer** | 1.4d | 2019-05-29 10:30 | 2019-05-30 09:30 |  | 8.99d | 0d |  |  | 7h | 35 |  |
| 155 | 1.3.8.3.7.1 | Carregar todos os dados relativos ao Aluguer | 2h | 2019-05-29 10:30 | 2019-05-29 13:30 | 137, 141, 143, 146, 148, 151 | 8.99d | 0d |  | Diogo | 2h | 10 | 20 |
| 156 | 1.3.8.3.7.2 | Implementar código para emitir fatura | 5h | 2019-05-29 13:30 | 2019-05-30 09:30 | 155 | 8.99d |  |  | Diogo | 5h | 25 | 40 |
| 157 | 1.3.8.3.8 | **User Story 40- Proteções e Correções de Erros** | 2.8d | 2019-05-30 09:30 | 2019-05-31 16:30 |  | 8.99d | 1.7d |  |  | 14h | 70 |  |
| 158 | 1.3.8.3.8.1 | Garantir que os dados anteriores são carregados | 1h | 2019-05-30 09:30 | 2019-05-30 10:30 | 154 | 8.99d | 0d |  | Diogo | 1h | 5 | 15 |
| 159 | 1.3.8.3.8.2 | Garantir que os dados criados no Form são guardados | 1h | 2019-05-30 10:30 | 2019-05-30 11:30 | 158 | 8.99d | 0d |  | Diogo | 1h | 5 | 15 |
| 160 | 1.3.8.3.8.3 | Implementar Proteções Necessárias | 4h | 2019-05-30 11:30 | 2019-05-30 16:30 | 159 | 8.99d | 0d |  | Diogo | 4h | 20 | 30 |
| 161 | 1.3.8.3.8.4 | Testar Funcionalidades | 3h | 2019-05-30 16:30 | 2019-05-31 10:30 | 160 | 8.99d | 0d |  | Diogo | 3h | 15 | 20 |
| 162 | 1.3.8.3.8.5 | Correção de Bugs/Erros | 3h | 2019-05-31 10:30 | 2019-05-31 14:30 | 161 | 8.99d | 0d |  | Diogo | 3h | 15 | 30 |
| 163 | 1.3.8.3.8.6 | Refatoração do Código | 2h | 2019-05-31 14:30 | 2019-05-31 16:30 | 162 | 8.99d |  |  | Diogo | 2h | 10 | 20 |
| 164 | 1.3.9 | Revisão do Sprint | 2h | 2019-06-04 08:00 | 2019-06-04 10:00 | 137, 141, 143, 146, 148, 151, 154, 157 | 7.29d | 0d | start no earlier than 2019-06-04 08:00 | Daniel; Diogo | 4h | 20 | 20 |
| 165 | 1.3.10 | Retrospetiva do Sprint | 1h | 2019-06-04 10:00 | 2019-06-04 11:00 | 164 | 7.29d | 0d |  | Daniel; Diogo | 2h | 10 | 20 |
| 166 | 1.3.11 | Reunião Final Do Sprint | 30min | 2019-06-04 11:00 | 2019-06-04 11:30 | 165 | 7.29d | 0d |  | Daniel; Diogo | 1h | 5 | 20 |
| 167 | 1.3.12 | SPRINT 2 COMPLETO | 2min | 2019-06-04 11:30 | 2019-06-04 11:32 | 166 | 7.29d |  |  | Daniel; Diogo | 0.07h | 0.33 |  |

| ID | WBS | Task | Duration | Start | Finish | Predecessors | Total slack | Free slack | Resources | Work | Cost | Story Points |
| --- | --- | --- | --- | --- | --- | --- | --- | --- | --- | --- | --- | --- |
| 168 | 1.4 | **Conclusão do Projeto** | 0.5d | 2019-06-05 10:02 | 2019-06-05 13:32 |  | 5.49d |  | Daniel; Diogo | 10h | 50 |  |
| 169 | 1.4.1 | Reunião Final Projeto | 2h | 2019-06-05 10:02 | 2019-06-05 13:02 | 24, 95 | 5.49d | 0d | Daniel; Diogo | 4h | 20 | 15 |
| 170 | 1.4.2 | Conclusões sobre os Erros Cometidos | 30min | 2019-06-05 13:02 | 2019-06-05 13:32 | 169 | 5.49d |  | Daniel; Diogo | 1h | 5 | 15 |
| 171 | 1.5 | Projeto Concluido | 2min | 2019-06-11 08:00 | 2019-06-11 08:02 | 2, 4, 17, 168 | 0d |  | Daniel; Diogo | 0.07h | 0.33 |  |
